# ProjetoCinefy

Schedule from MS Project, 2020-08-24 to 2021-11-11, costs in R$, A marks actual dates.

## Calendars

- Padrão: Mon-Fri 09:00-12:00, 13:00-18:00; Sat-Sun off.

## Resources

| Resource | Rate |
| --- | --- |
| Projetista de Software |  |
| Analista de sistema uml | 20 |
| Engenherio de Software |  |
| Front-End | 25 |
| Full-Stack | 50 |
| Back-End | 25 |
| DBA | 30 |

## Schedule

| ID | WBS | Task | Type | Duration | Start | Finish | Predecessors | Complete | Remaining | Baseline start | Baseline finish | Baseline duration | Total slack | Deadline | Resources | Work | Actual work | Cost | Baseline cost | Actual cost | %Prevista |
| --- | --- | --- | --- | --- | --- | --- | --- | --- | --- | --- | --- | --- | --- | --- | --- | --- | --- | --- | --- | --- | --- |
| 1 | 1 | **Projeto de Final de Curso - Cinefy** |  | 319d? | 2020-08-24 A | 2021-11-11 |  | 83% | 55.02d? | 2020-08-24 | 2021-05-13 | 189d? |  |  |  | 2344h | 2278.8h | 52,355 | 12,770 | 50,779.5 | 100% |
| 2 | 1.1 | **Documentação Cinefy** |  | 286d | 2020-08-24 A | 2021-09-27 |  | 96% | 11.71d | 2020-08-24 | 2020-12-01 | 71d | 0d |  |  | 2088h | 2027.6h | 45,370 | 3,520 | 43,926 | 100% |
| 3 | 1.1.1 | Documento de introdução do PFC | manual | 1d | 2020-08-24 A | 2020-08-24 A |  | 100% |  | 2020-08-24 | 2020-08-24 | 1d |  |  | Analista de sistema uml | 8h | 8h | 230 | 70 | 230 | 100% |
| 4 | 1.1.2 | Documento de visão | manual | 10d | 2020-08-26 A | 2020-09-08 A | 3 | 100% |  | 2020-08-26 | 2020-09-08 | 10d |  |  | Analista de sistema uml | 80h | 80h | 2,300 | 700 | 2,300 | 100% |
| 5 | 1.1.3 | Atividades do negócio |  | 6d | 2020-09-09 A | 2020-09-16 A | 4 | 100% |  | 2020-09-09 | 2020-09-16 | 6d |  |  | Analista de sistema uml | 48h | 48h | 1,380 | 420 | 1,380 | 100% |
| 6 | 1.1.4 | Documento de requisitos | manual | 5d | 2020-09-17 A | 2020-09-23 A | 4, 5 | 100% |  | 2020-09-17 | 2020-09-23 | 5d |  |  | Analista de sistema uml | 40h | 40h | 1,150 | 350 | 1,150 | 100% |
| 7 | 1.1.5 | Relatório de viablidade | manual | 5d | 2020-09-24 A | 2020-09-30 A |  | 100% |  | 2020-09-24 | 2020-09-30 | 5d |  |  | Analista de sistema uml | 40h | 40h | 1,150 | 350 | 1,150 | 100% |
| 8 | 1.1.6 | Diagrama de caso de uso geral | manual | 8d | 2020-10-01 A | 2020-10-12 A | 6 | 100% |  | 2020-10-01 | 2020-10-12 | 8d |  |  | Analista de sistema uml | 64h | 64h | 1,840 | 560 | 1,840 | 100% |
| 9 | 1.1.7 | **Diagrama de Sequência** |  | 122d | 2021-02-11 A | 2021-07-30 A |  | 100% |  | 2021-02-11 | 2021-03-26 | 32d |  |  | Analista de sistema uml | 976h | 976h | 20,920 | 2,170 | 20,920 | 100% |
| 10 | 1.1.7.1 | CreateResenha | manual | 4d | 2021-02-12 A | 2021-02-17 A |  | 100% |  | 2021-02-12 | 2021-02-17 | 4d |  | 2020-02-17 |  |  |  | 100 | 280 | 100 | 100% |
| 11 | 1.1.7.2 | CreateUsuario | manual | 4d | 2021-02-18 A | 2021-02-23 A |  | 100% |  | 2021-02-18 | 2021-02-23 | 4d |  |  |  |  |  | 100 | 280 | 100 | 100% |
| 12 | 1.1.7.3 | DeleteUsuario | manual | 4d | 2021-02-24 A | 2021-03-01 A |  | 100% |  | 2021-02-24 | 2021-03-01 | 4d |  |  |  |  |  | 100 | 280 | 100 | 100% |
| 13 | 1.1.7.4 | DeleteResenha | manual | 4d | 2021-03-02 A | 2021-03-05 A |  | 100% |  | 2021-03-02 | 2021-03-05 | 4d |  |  |  |  |  | 100 | 280 | 100 | 100% |
| 14 | 1.1.7.5 | ReadResenha | manual | 4d | 2021-03-08 A | 2021-03-11 A |  | 100% |  | 2021-03-08 | 2021-03-11 | 4d |  |  |  |  |  | 100 | 280 | 100 | 100% |
| 15 | 1.1.7.6 | UpdateResenha | manual | 4d | 2021-03-18 A | 2021-03-23 A |  | 100% |  | 2021-03-18 | 2021-03-23 | 4d |  |  |  |  |  | 100 | 280 | 100 | 100% |
| 16 | 1.1.7.7 | ReadUsuario | manual | 4d | 2021-03-12 A | 2021-03-17 A |  | 100% |  | 2021-03-12 | 2021-03-17 | 4d |  |  |  |  |  | 100 | 280 | 100 | 100% |
| 17 | 1.1.7.8 | UpdateUsuario | manual | 3d | 2021-03-24 A | 2021-03-26 A |  | 100% |  | 2021-03-24 | 2021-03-26 | 3d |  |  |  |  |  | 100 | 210 | 100 | 100% |
| 18 | 1.1.7.9 | ReadLista | manual | 4d | 2021-04-05 A | 2021-04-08 A |  | 100% |  |  |  |  |  |  |  |  |  | 100 |  | 100 |  |
| 19 | 1.1.7.10 | UpdateLista | manual | 4d | 2021-04-09 A | 2021-04-14 A |  | 100% |  |  |  |  |  |  |  |  |  | 100 |  | 100 |  |
| 20 | 1.1.7.11 | DeleteLista | manual | 4d | 2021-04-15 A | 2021-04-20 A |  | 100% |  |  |  |  |  |  |  |  |  | 100 |  | 100 |  |
| 21 | 1.1.7.12 | VisualizarFeed | manual | 4d | 2021-04-21 A | 2021-04-26 A |  | 100% |  |  |  |  |  |  |  |  |  | 100 |  | 100 |  |
| 22 | 1.1.7.13 | CreateLista | manual | 4d | 2021-04-27 A | 2021-04-30 A |  | 100% |  |  |  |  |  |  |  |  |  | 100 |  | 100 |  |
| 23 | 1.1.7.14 | CreateGenero | manual | 4d | 2021-05-03 A | 2021-05-06 A |  | 100% |  |  |  |  |  |  |  |  |  | 100 |  | 100 |  |
| 24 | 1.1.8 | Especificação de caso de uso | manual | 6d | 2020-10-13 A | 2020-10-20 A | 8 | 100% |  | 2020-10-13 | 2020-10-20 | 6d |  |  | Analista de sistema uml | 48h | 48h | 1,040 | 420 | 1,040 | 100% |
| 25 | 1.1.9 | Diagrama de classe | manual | 6d | 2020-10-21 A | 2020-10-28 A |  | 100% |  | 2020-10-21 | 2020-10-28 | 6d |  |  | Analista de sistema uml | 48h | 48h | 1,080 | 420 | 1,080 | 100% |
| 26 | 1.1.10 | Diagrama de contexto | manual | 6d | 2021-02-19 A | 2021-02-26 A |  | 100% |  | 2021-02-19 | 2021-02-26 | 6d |  |  | Analista de sistema uml | 48h | 48h | 1,090 | 540 | 1,090 | 100% |
| 27 | 1.1.11 | Diagrama de dados | manual | 4d | 2021-04-01 A | 2021-04-06 A |  | 100% |  | 2021-04-01 | 2021-04-06 | 4d |  |  | Analista de sistema uml | 32h | 32h | 760 | 360 | 760 | 100% |
| 28 | 1.1.12 | Diagrama de componentes | manual | 6d | 2021-03-19 A | 2021-03-26 A |  | 100% |  | 2021-03-19 | 2021-03-26 | 6d |  |  | Analista de sistema uml | 48h | 48h | 1,130 | 540 | 1,130 | 100% |
| 29 | 1.1.13 | Diagrama de pacotes | manual | 6d | 2021-03-05 A | 2021-03-12 A |  | 100% |  | 2021-03-05 | 2021-03-12 | 6d |  |  | Analista de sistema uml | 48h | 48h | 1,040 | 540 | 1,040 | 100% |
| 30 | 1.1.14 | Diagrama de Atividade | manual | 1d | 2020-08-24 | 2020-08-24 |  |  |  |  |  |  |  |  | Analista de sistema uml | 8h |  | 220 |  |  |  |
| 31 | 1.1.15 | MOR | manual | 1d | 2020-08-24 A | 2020-08-24 A | 32 | 100% |  |  |  |  |  |  | Back-End | 8h | 8h | 200 |  | 200 |  |
| 32 | 1.1.16 | MER | manual | 1d | 2021-08-25 A | 2021-08-25 A |  | 100% |  |  |  |  |  |  | DBA | 8h | 8h | 340 |  | 340 |  |
| 33 | 1.1.17 | Diagrama de Implantação | manual | 1d | 2020-08-24 A | 2020-08-24 |  | 45% | 0.55d |  |  |  |  |  | Analista de sistema uml | 8h | 3.6h | 250 |  | 112.5 |  |

Notes:
- 3: Foi definido o grupo e o Tema do projeto Cinefy
- 4: Foi discutido e definido com o grupo os seguintes itens do projeto: / ·Objetivo / ·Necessidade do Negócio / ·Definição do escopo / ·Premissas do sistema / ·Restrições do sistema / ·Formalização da equipe / ·Especificações técnicas / ·Análise de risco / ·Cronograma de marcos resumidos / ·Orçamento Resumido
- 5: Foi discutido e definido com o grupo as seguintes atividades de negócio: / ·Cadastro de usuário / ·Indicação de filmes / ·Análise de filmes
- 6: ·1 Controle de Versão. / ·2 Documento de requisitos / ·2.1 Objetivo do Documento / ·2.2 Técnicas utilizadas na elucidação de requisitos / ·2.3 Descritivo do processo de negócio / ·2.3.1 Processo de negócio / ·2.3.2 Problemas apresentados / ·2.4 Proposta de software / ·2.5 Definições, acrônimos e abreviações / ·2.6 Lista de requisitos / ·2.6.1 Requisitos Funcionais / ·2.6.2 Requisitos não funcionais / ·2.6.3 Regras de negócio
- 7: RELATÓRIO DE VIABILIDADE/ ·3.1 Introdução / ·3.2 Objetivos do documento / ·3.3 Descritivo do processo de negócio / ·3.3.1 Processo de negócio / ·3.3.2 Descrição do Problema / ·3.3.3 Alternativas de solução / ·3.4 Testes de viabilidade / ·3.4.1 estudo de viabilidade operacional / ·3.4.2 Estudo de viabilidade técnico / ·3.4.3 Estudo de viabilidade de cronograma. / ·3.4.4 Matriz de viabilidade BCG
- 8: Foi definido e diagramado o caso de uso geral do sistema Cinefy
- 24: Foi especificado cada necessidade dos módulos presente no sistema
- 25: Foi especificado as classes de domínio do sistema

| ID | WBS | Task | Type | Duration | Start | Finish | Predecessors | Complete | Remaining | Actual start | Baseline start | Baseline finish | Baseline duration | Total slack | Resources | Work | Actual work | Cost | Baseline cost | Actual cost | %Prevista |
| --- | --- | --- | --- | --- | --- | --- | --- | --- | --- | --- | --- | --- | --- | --- | --- | --- | --- | --- | --- | --- | --- |
| 34 | 1.1.18 | **Arquitetura de Sistemas** |  | 33d | 2021-02-19 A | 2021-04-06 A |  | 100% |  |  | 2021-02-19 | 2021-03-26 | 26d |  | Analista de sistema uml | 440h | 440h | 7,260 | 1,620 | 7,260 | 100% |
| 35 | 1.1.18.1 | Diagrama de contexto | manual | 6d | 2021-02-19 A | 2021-02-26 A |  | 100% |  |  | 2021-02-19 | 2021-02-26 | 6d |  | Engenherio de Software | 48h | 48h | 540 | 540 | 540 | 100% |
| 36 | 1.1.18.2 | Diagrama de pacotes | manual | 6d | 2021-03-05 A | 2021-03-12 A |  | 100% |  |  | 2021-03-05 | 2021-03-12 | 6d |  | Engenherio de Software | 48h | 48h | 540 | 540 | 540 | 100% |
| 37 | 1.1.18.3 | Diagrama de componentes da aplicação/software | manual | 6d | 2021-03-19 A | 2021-03-26 A |  | 100% |  |  | 2021-03-19 | 2021-03-26 | 6d |  | Engenherio de Software | 48h | 48h | 540 | 540 | 540 | 100% |
| 38 | 1.1.18.4 | Diagrama de dados | manual | 4d | 2021-04-01 A | 2021-04-06 A |  | 100% |  |  | 2021-04-01 | 2021-04-06 | 4d |  | Engenherio de Software | 32h | 32h | 360 | 360 | 360 | 100% |
| 39 | 1.1.19 | Analise e possíveis correções dos diagramas | manual | 11d | 2021-09-13 A | 2021-09-27 |  | 45% | 6d |  | 2020-10-29 | 2020-11-30 | 23d |  | Analista de sistema uml | 88h | 40h | 1,990 | 230 | 903.5 | 100% |
| 40 | 1.2 | **Desenvolvimento do sistema** |  | 148d? | 2021-04-07 | 2021-10-29 |  | 51% | 72.01d? | 2021-03-24 | 2021-04-07 | 2021-05-12 | 26d |  |  | 256h | 251.2h | 6,985 | 5,100 | 6,853.5 | 100% |
| 41 | 1.2.1 | **Front-End** |  | 118d? | 2021-04-07 A | 2021-09-17 |  | 55% | 53.2d? |  |  |  |  |  |  | 256h | 251.2h | 6,985 |  | 6,853.5 |  |
| 42 | 1.2.1.1 | Página index | manual | 3d | 2021-04-07 A | 2021-04-09 A |  | 100% |  |  | 2021-04-07 | 2021-04-09 | 3d |  | Front-End | 24h | 24h | 700 | 300 | 700 | 100% |
| 43 | 1.2.1.2 | Página Cadastro | manual | 4d | 2021-04-12 A | 2021-04-15 A |  | 100% |  |  | 2021-04-12 | 2021-04-15 | 4d |  | Front-End | 32h | 32h | 860 | 800 | 860 | 100% |
| 44 | 1.2.1.3 | Página Login | manual | 5d | 2021-04-16 A | 2021-04-22 A |  | 100% |  |  | 2021-04-16 | 2021-04-22 | 5d |  | Front-End | 40h | 40h | 1,060 | 1,000 | 1,060 | 100% |
| 45 | 1.2.1.4 | Página Feed | manual | 8d | 2021-04-23 A | 2021-05-04 A |  | 100% |  |  | 2021-04-23 | 2021-05-04 | 8d |  | Front-End | 64h | 64h | 1,750 | 1,600 | 1,750 | 100% |
| 46 | 1.2.1.5 | Página Trailer Especifico | manual | 6d | 2021-05-05 A | 2021-05-12 A |  | 100% |  |  | 2021-05-05 | 2021-05-12 | 6d |  | Front-End | 48h | 48h | 1,300 | 1,400 | 1,300 | 100% |
| 47 | 1.2.1.6 | Página Perfil | manual | 6d | 2021-09-10 A | 2021-09-17 |  | 90% | 0.6d |  |  |  |  |  | Front-End | 48h | 43.2h | 1,315 |  | 1,183.5 |  |
| 48 | 1.2.1.7 | Página Login Admin | manual | 1d | 2021-04-07 A | 2021-04-07 A |  | 100% |  |  |  |  |  |  |  |  |  |  |  |  |  |
| 49 | 1.2.1.8 | Página Admin Gerenciador Usuário | manual | 13d | 2021-09-01 | 2021-09-17 |  |  |  |  |  |  |  |  |  |  |  |  |  |  |  |
| 50 | 1.2.1.9 | Página Admin Comentários | manual | 13d | 2021-09-01 | 2021-09-17 |  |  |  |  |  |  |  |  |  |  |  |  |  |  |  |
| 51 | 1.2.2 | **Back-End** |  | 129d? | 2021-03-24 A | 2021-09-20 |  | 25% | 96.75d? |  |  |  |  | 0d |  |  |  |  |  |  |  |
| 52 | 1.2.2.1 | Login do Usuário | manual | 1d | 2021-04-07 A | 2021-04-07 A | 16, 44 | 100% |  |  |  |  |  |  |  |  |  |  |  |  |  |
| 53 | 1.2.2.2 | Cadastro do Usuário | manual | 1d | 2021-04-07 A | 2021-04-07 A | 11, 43 | 100% |  |  |  |  |  |  |  |  |  |  |  |  |  |
| 54 | 1.2.2.3 | Perfil | manual | 1d? | 2021-09-20 | 2021-09-20 | 16, 17, 47, 19, 20, 12, 22, 23 |  |  |  |  |  |  |  |  |  |  |  |  |  |  |
| 55 | 1.2.2.4 | Feed | manual | 1d? | 2021-05-05 | 2021-05-05 | 21, 45 |  |  |  |  |  |  |  |  |  |  |  |  |  |  |
| 56 | 1.2.2.5 | Trailer Especifico | manual | 1d? | 2021-04-27 | 2021-04-27 | 21 |  |  |  |  |  |  |  |  |  |  |  |  |  |  |
| 57 | 1.2.2.6 | Login Admin | manual | 1d? | 2021-04-08 | 2021-04-08 | 16, 48 |  |  |  |  |  |  |  |  |  |  |  |  |  |  |
| 58 | 1.2.2.7 | Gerenciador de usuários | manual | 1d? | 2021-04-21 | 2021-04-21 | 12, 17, 20 |  |  |  |  |  |  |  |  |  |  |  |  |  |  |
| 59 | 1.2.2.8 | Gerenciador Comentários | manual | 1d? | 2021-03-24 | 2021-03-24 | 13, 14, 15 |  |  |  |  |  |  |  |  |  |  |  |  |  |  |
| 60 | 1.2.3 | Link Front com Back | manual | 1d? | 2021-04-07 | 2021-04-07 |  |  |  |  |  |  |  |  |  |  |  |  |  |  |  |

Notes:
- 39: Correções feitas após as devidas orientações dos professores envolvidos.
